# 舆情分析

Schedule from MS Project, 2020-11-02 to 2021-01-01, costs in ¥.
Microsoft

## Calendars

- 标准: Mon-Fri 08:00-12:00, 13:00-17:00; Sat-Sun off.

## Resources

| Resource | Rate |
| --- | --- |
| 项目经理 | 35 |
| 产品经理 | 43 |
| 技术专家 | 30 |
| UI设计师 | 35 |
| 测试专家 | 45 |
| 需求专家 | 20 |
| 设计专家 | 23 |
| 程序员1 | 25 |
| 程序员2 | 25 |
| 程序员3 | 25 |
| 测试员1 | 20 |
| 测试员2 | 20 |
| 团队建设费 | 2000 |
| 程 |  |
| 间接成本 |  |
| 储备资金 |  |

## Schedule

| ID | WBS | Task | Type | Duration | Start | Finish | Predecessors | Total slack | Resources | Work | Cost | 间接成本 | 储备资金 |
| --- | --- | --- | --- | --- | --- | --- | --- | --- | --- | --- | --- | --- | --- |
| 1 | 1 | **舆情分析监控平台** |  | 44.83d | 2020-11-02 | 2021-01-01 |  | 0d | 储备资金 [0.1%]; 间接成本 [0.1%] | 1221.6h | 237,912.32 |  |  |
| 2 | 1.1 | **启动** |  | 3d | 2020-11-02 | 2020-11-04 |  |  | 储备资金 [0.1%]; 间接成本 [0.1%] | 112h | 14,428.8 |  |  |
| 3 | 1.1.1 | 组建核心团队 | manual | 1d | 2020-11-02 | 2020-11-02 |  |  | 项目经理; 产品经理; 技术专家; UI设计师; 测试专家 | 40h | 3,008 | ¥300.80 | ¥601.60 |
| 4 | 1.1.2 | 干系人分析 | manual | 1d | 2020-11-02 | 2020-11-02 |  |  | 项目经理 | 8h | 560 | ¥56.00 | ¥112.00 |
| 5 | 1.1.3 | 里程碑计划 | manual | 1d | 2020-11-02 | 2020-11-02 |  |  | 项目经理 | 8h | 560 | ¥56.00 | ¥112.00 |
| 6 | 1.1.4 | 制定项目章程 | manual | 1d | 2020-11-03 | 2020-11-03 | 3, 4, 5 |  | 项目经理 | 8h | 560 | ¥56.00 | ¥112.00 |
| 7 | 1.1.5 | 项目启动大会 | manual | 1d | 2020-11-04 | 2020-11-04 | 6 |  | UI设计师; 测试专家; 产品经理; 技术专家; 项目经理; 需求专家 | 48h | 3,328 | ¥3,32.800 | ¥665.60 |
| 8 | 1.2 | **规划** |  | 14d | 2020-11-05 | 2020-11-24 |  |  | 储备资金 [0.1%]; 间接成本 [0.1%] | 208h | 38,064 |  |  |
| 9 | 1.2.1 | **规划范围** |  | 4d | 2020-11-05 | 2020-11-10 |  |  |  | 56h | 5,520 | ¥552.00 | ¥1,104.00 |
| 10 | 1.2.1.1 | 制定需求说明书 | manual | 1d | 2020-11-05 | 2020-11-05 | 7 |  | 需求专家 | 8h | 320 | ¥32.00 | ¥64.00 |
| 11 | 1.2.1.2 | 界面设计 | manual | 1d | 2020-11-06 | 2020-11-06 | 10 |  | UI设计师 | 8h | 560 | ¥56.00 | ¥112.00 |
| 12 | 1.2.1.3 | 详细设计说明书 | manual | 1d | 2020-11-06 | 2020-11-06 | 10 |  | UI设计师 | 8h | 560 | ¥56.00 | ¥112.00 |
| 13 | 1.2.1.4 | 项目范围说明书 | manual | 1d | 2020-11-06 | 2020-11-06 | 10 |  | 项目经理 | 8h | 560 | ¥56.00 | ¥112.00 |
| 14 | 1.2.1.5 | 创建WBS | manual | 1d | 2020-11-09 | 2020-11-09 | 11, 12, 13 |  | 项目经理; UI设计师 | 16h | 1,120 | ¥112.00 | ¥224.00 |
| 15 | 1.2.1.6 | 形成范围基准 | manual | 1d | 2020-11-10 | 2020-11-10 | 14 |  | 项目经理 | 8h | 560 | ¥56.00 | ¥112.00 |
| 16 | 1.2.2 | **规划时间** |  | 8d | 2020-11-11 | 2020-11-20 |  |  |  | 40h | 4,200 | ¥420.00 | ¥840.00 |
| 17 | 1.2.2.1 | 排列工作包顺序 | manual | 1d | 2020-11-11 | 2020-11-11 | 15 |  | 项目经理 | 8h | 560 | ¥56.00 | ¥112.00 |
| 18 | 1.2.2.2 | 估算资源 | manual | 1d | 2020-11-12 | 2020-11-12 | 17 |  | 项目经理 | 8h | 560 | ¥56.00 | ¥112.00 |
| 19 | 1.2.2.3 | 估算持续时间 | manual | 1d | 2020-11-13 | 2020-11-13 | 18 |  | 项目经理 | 8h | 560 | ¥56.00 | ¥112.00 |
| 20 | 1.2.2.4 | 制定进度计划 | manual | 1d | 2020-11-16 | 2020-11-16 | 19 |  | 项目经理 | 8h | 560 | ¥56.00 | ¥112.00 |
| 21 | 1.2.2.5 | 形成进度基准 | manual | 1d | 2020-11-17 | 2020-11-17 | 20 |  | 项目经理 | 8h | 560 | ¥56.00 | ¥112.00 |
| 22 | 1.2.3 | **规划成本** |  | 3d | 2020-11-18 | 2020-11-20 |  |  |  | 24h | 2,520 | ¥252.00 | ¥504.00 |
| 23 | 1.2.3.1 | 项目成本估算 | manual | 1d | 2020-11-18 | 2020-11-18 | 21 |  | 项目经理 | 8h | 560 | ¥56.00 | ¥112.00 |
| 24 | 1.2.3.2 | 项目预算 | manual | 1d | 2020-11-19 | 2020-11-19 | 23 |  | 项目经理 | 8h | 560 | ¥56.00 | ¥112.00 |
| 25 | 1.2.3.3 | 形成范围基准 | manual | 1d | 2020-11-20 | 2020-11-20 | 24 |  | 项目经理 | 8h | 560 | ¥56.00 | ¥112.00 |

| ID | WBS | Task | Type | Duration | Start | Finish | Predecessors | Total slack | Constraint | Resources | Work | Cost | 间接成本 | 储备资金 |
| --- | --- | --- | --- | --- | --- | --- | --- | --- | --- | --- | --- | --- | --- | --- |
| 26 | 1.2.4 | **规划质量** |  | 2d | 2020-11-11 | 2020-11-12 |  |  |  |  | 16h | 2,160 | ¥216.00 | ¥432.00 |
| 27 | 1.2.4.1 | 制定测试计划 | manual | 1d | 2020-11-11 | 2020-11-11 | 15 |  |  | 测试专家 | 8h | 720 | ¥72.00 | ¥144.00 |
| 28 | 1.2.4.2 | 制定测试用例 | manual | 1d | 2020-11-12 | 2020-11-12 | 27 |  |  | 测试专家 | 8h | 720 | ¥72.00 | ¥144.00 |
| 29 | 1.2.5 | **规划人力资源** |  | 2d | 2020-11-13 | 2020-11-16 |  |  |  |  | 16h | 1,680 | ¥168.00 | ¥336.00 |
| 30 | 1.2.5.1 | 制定人力资源计划 | manual | 1d | 2020-11-13 | 2020-11-13 | 18 |  |  | 项目经理 | 8h | 560 | ¥56.00 | ¥112.00 |
| 31 | 1.2.5.2 | 制定人员配备管理计划 | manual | 1d | 2020-11-16 | 2020-11-16 | 30 |  |  | 项目经理 | 8h | 560 | ¥56.00 | ¥112.00 |
| 32 | 1.2.6 | **规划沟通** |  | 1d | 2020-11-17 | 2020-11-17 |  |  |  |  | 8h | 840 | ¥84.00 | ¥168.00 |
| 33 | 1.2.6.1 | 制定沟通管理计划 | manual | 1d | 2020-11-17 | 2020-11-17 | 31 |  |  | 项目经理 | 8h | 560 | ¥56.00 | ¥112.00 |
| 34 | 1.2.7 | **规划采购** |  | 2d | 2020-11-13 | 2020-11-16 |  |  |  |  | 16h | 1,680 | ¥168.00 | ¥336.00 |
| 35 | 1.2.7.1 | 自制外购分析 | manual | 1d | 2020-11-13 | 2020-11-13 | 18 |  |  | 项目经理 | 8h | 560 | ¥56.00 | ¥112.00 |
| 36 | 1.2.7.2 | 制定采购文件 | manual | 1d | 2020-11-16 | 2020-11-16 | 35 |  |  | 项目经理 | 8h | 560 | ¥56.00 | ¥112.00 |
| 37 | 1.2.8 | **规划风险** |  | 3d | 2020-11-21 | 2020-11-24 |  |  |  |  | 32h | 3,360 | ¥336.00 | ¥672.00 |
| 38 | 1.2.8.1 | 识别风险 | manual | 1d | 2020-11-21 | 2020-11-21 | 16, 22, 26, 29 |  | start no earlier than 2020-11-21 | 项目经理 | 8h | 560 | ¥56.00 | ¥112.00 |
| 39 | 1.2.8.2 | 风险分析 | manual | 1d | 2020-11-22 | 2020-11-22 | 38 |  | start no earlier than 2020-11-22 | 项目经理 | 8h | 560 | ¥56.00 | ¥112.00 |
| 40 | 1.2.8.3 | 制定风险登记册 | manual | 1d | 2020-11-23 | 2020-11-23 | 39 |  | start no earlier than 2020-11-23 | 项目经理 | 8h | 560 | ¥56.00 | ¥112.00 |
| 41 | 1.2.8.4 | 规划整合 | manual | 1d | 2020-11-24 | 2020-11-24 | 40 |  | start no earlier than 2020-11-24 | 项目经理 | 8h | 560 | ¥56.00 | ¥112.00 |
| 42 | 1.3 | **执行与监控** |  | 20.46d | 2020-11-25 | 2020-12-23 |  | 0d |  | 储备资金 [0.1%]; 间接成本 [0.1%] | 637.6h | 113,037.6 |  |  |
| 43 | 1.3.1 | 组建项目团队 | manual | 1d | 2020-11-25 | 2020-11-25 | 8 |  | start no earlier than 2020-11-25 | 项目经理; UI设计师; 测试员1; 测试员2; 测试专家; 产品经理; 程序员1; 程序员2; 程序员3; 技术专家; 设计专家 | 88h | 5,152 | ¥5,15.200 | ¥1,030.40 |
| 44 | 1.3.2 | **项目执行** |  | 19d | 2020-11-25 | 2020-12-22 |  |  |  |  | 360h | 45,880 | ¥4,588.00 | ¥9,176.00 |
| 45 | 1.3.2.1 | **主页** |  | 5d | 2020-11-25 | 2020-12-01 |  |  |  | 程序员1; 程序员2; 程序员3 | 216h | 11,400 | ¥1,140.00 | ¥2,280.00 |
| 46 | 1.3.2.1.1 | **数据概览** |  | 2d | 2020-11-25 | 2020-11-26 |  |  |  |  | 16h | 720 | ¥72.00 | ¥144.00 |
| 47 | 1.3.2.1.1.1 | 数据平台概览 | manual | 2d | 2020-11-25 | 2020-11-26 | 11 |  | start no earlier than 2020-11-25 | 程序员1 | 16h | 560 | ¥56.00 | ¥112.00 |
| 48 | 1.3.2.1.2 | **数据监控** |  | 2d | 2020-11-27 | 2020-11-30 |  |  |  |  | 16h | 720 | ¥72.00 | ¥144.00 |
| 49 | 1.3.2.1.2.1 | 实时监控 | manual | 2d | 2020-11-25 | 2020-11-26 | 11 |  |  | 程序员1 | 16h | 560 | ¥56.00 | ¥112.00 |

| ID | WBS | Task | Type | Duration | Start | Finish | Predecessors | Constraint | Resources | Work | Cost | 间接成本 | 储备资金 |
| --- | --- | --- | --- | --- | --- | --- | --- | --- | --- | --- | --- | --- | --- |
| 50 | 1.3.2.1.3 | **报警管理** |  | 4d | 2020-11-25 | 2020-11-30 |  |  |  | 32h | 1,360 | ¥1,36.00 | ¥272.00 |
| 51 | 1.3.2.1.3.1 | 报警通知 | manual | 2d | 2020-11-25 | 2020-11-26 | 11 |  | 程序员2 | 16h | 560 | ¥56.00 | ¥112.00 |
| 52 | 1.3.2.1.3.2 | 智能预警配置 | manual | 2d | 2020-11-27 | 2020-11-30 | 51 |  | 测试员2 | 16h | 480 | ¥48.00 | ¥96.00 |
| 53 | 1.3.2.1.4 | **系统管理** |  | 4d | 2020-11-25 | 2020-11-30 |  |  |  | 32h | 1,440 | ¥144.00 | ¥288.00 |
| 54 | 1.3.2.1.4.1 | 用户管理 | manual | 2d | 2020-11-25 | 2020-11-26 | 11 |  | 程序员3 | 16h | 560 | ¥56.00 | ¥112.00 |
| 55 | 1.3.2.1.4.2 | 权限管理 | manual | 2d | 2020-11-27 | 2020-11-30 | 54 |  | 程序员3 | 16h | 560 | ¥56.00 | ¥112.00 |
| 56 | 1.3.2.2 | **后台** |  | 14d | 2020-11-28 | 2020-12-16 |  |  |  | 144h | 21,040 | ¥2,104.00 | ¥4,208.00 |
| 57 | 1.3.2.2.1 | **爬虫模块** |  | 9d | 2020-11-28 | 2020-12-09 |  |  |  | 56h | 3,640 | ¥364.00 | ¥728.00 |
| 58 | 1.3.2.2.1.1 | 对网站进行爬取 | manual | 2d | 2020-11-28 | 2020-12-01 | 43 |  | 程序员1 | 16h | 720 | ¥720.00 | ¥144.00 |
| 59 | 1.3.2.2.1.2 | 对数据进行抓取和处理 | manual | 4d | 2020-12-02 | 2020-12-08 | 58 |  | 程序员1 | 32h | 1,440 | ¥1,440.00 | ¥288.00 |
| 60 | 1.3.2.2.1.3 | 数据存储 | manual | 1d | 2020-12-08 | 2020-12-09 | 59 |  | 程序员1 | 8h | 360 | ¥360.00 | ¥72.00 |
| 61 | 1.3.2.2.2 | **情感分析模块** |  | 9d | 2020-11-28 | 2020-12-09 |  |  |  | 48h | 3,120 | ¥3,120.00 | ¥624.00 |
| 62 | 1.3.2.2.2.1 | 对数据进行预处理 | manual | 2d | 2020-11-28 | 2020-12-01 | 43 |  | 程序员2 | 16h | 720 | ¥72.00 | ¥144.00 |
| 63 | 1.3.2.2.2.2 | 计算词向量 | manual | 1d | 2020-12-02 | 2020-12-03 | 62 |  | 程序员2 | 8h | 360 | ¥36.00 | ¥72.00 |
| 64 | 1.3.2.2.2.3 | 训练模型 | manual | 3d | 2020-12-04 | 2020-12-09 | 63 |  | 程序员2 | 24h | 1,080 | ¥108.00 | ¥216.00 |
| 65 | 1.3.2.2.3 | **热词变化词频模块** |  | 14d | 2020-11-28 | 2020-12-16 |  |  |  | 40h | 5,000 | ¥500.00 | ¥1,000.00 |
| 66 | 1.3.2.2.3.1 | 连接ES | manual | 2d | 2020-11-28 | 2020-12-01 | 43 |  | 程序员3 | 16h | 800 | ¥80.00 | ¥160.00 |
| 67 | 1.3.2.2.3.2 | 将数据存储进ES | manual | 1d | 2020-12-02 | 2020-12-03 | 66 |  | 程序员3 | 8h | 400 | ¥40.00 | ¥80.00 |
| 68 | 1.3.2.2.3.3 | 指定时间段热点追踪 | manual | 2d | 2020-12-04 | 2020-12-08 | 67 |  | 程序员3 | 16h | 800 | ¥80.00 | ¥160.00 |
| 69 | 1.3.2.2.3.4 | 指定时间段情感预警 | manual | 5d | 2020-12-09 | 2020-12-16 | 68 |  |  |  | 1,000 | ¥100.00 | ¥200.00 |
| 70 | 1.3.3 | **项目监控** |  | 3d | 2020-11-26 | 2020-11-28 |  |  |  | 104.8h | 9,168 | ¥916.80 | ¥1,833.60 |
| 71 | 1.3.3.1 | 各项指标监控 | manual | 1d | 2020-11-26 | 2020-11-26 | 43 | start no earlier than 2020-11-26 | 测试员1 [50%]; 程 [50%] | 8h | 300 | ¥30.00 | ¥60.00 |
| 72 | 1.3.3.2 | 监控评审 | manual | 1d | 2020-11-27 | 2020-11-27 | 71 | start no earlier than 2020-11-27 | UI设计师; 程 | 16h | 840 | ¥84.00 | ¥168.00 |
| 73 | 1.3.3.3 | 变更评审 | manual | 1d | 2020-11-28 | 2020-11-28 | 72 | start no earlier than 2020-11-28 | UI设计师; 程 | 16h | 840 | ¥84.00 | ¥168.00 |
| 74 | 1.3.3.4 | 例会 | manual | 1d | 2020-11-26 | 2020-11-26 | 43 | start no earlier than 2020-11-26 | UI设计师; 测试员1; 测试专家; 产品经理; 程序员1; 程序员2; 程序员3; 技术专家; 程 [10%] | 64.8h | 3,916 | ¥391.60 | ¥783.20 |

| ID | WBS | Task | Type | Duration | Start | Finish | Predecessors | Total slack | Constraint | Resources | Work | Cost | 间接成本 | 储备资金 |
| --- | --- | --- | --- | --- | --- | --- | --- | --- | --- | --- | --- | --- | --- | --- |
| 75 | 1.3.4 | **管理干系人** |  | 3d | 2020-11-26 | 2020-11-30 |  |  |  |  | 12.8h | 896 | ¥89.60 | ¥179.20 |
| 76 | 1.3.4.1 | 发布项目信息 | manual | 1d | 2020-11-26 | 2020-11-26 | 43 |  | start no earlier than 2020-11-26 | 程 [10%] | 0.8h | 28 | ¥2.80 | ¥5.60 |
| 77 | 1.3.4.2 | 报告监控指标 | manual | 1d | 2020-11-27 | 2020-11-27 | 43 |  |  | 程 | 8h | 280 | ¥28.00 | ¥56.00 |
| 78 | 1.3.4.3 | 干系人沟通 | manual | 1d | 2020-11-30 | 2020-11-30 | 43 |  |  | 程 [50%] | 4h | 140 | ¥14.00 | ¥28.00 |
| 79 | 1.3.5 | **团队建设** |  | 3d | 2020-11-30 | 2020-12-02 |  |  |  |  | 32h | 2,406 | ¥240.60 | ¥481.20 |
| 80 | 1.3.5.1 | 培训 | manual | 2d | 2020-11-30 | 2020-12-01 | 43 |  |  | UI设计师 [30%]; 测试员1 [40%]; 测试员2 [30%] | 16h | 784 | ¥78.40 | ¥156.80 |
| 81 | 1.3.5.2 | 娱乐活动 | manual | 1d | 2020-12-02 | 2020-12-02 | 43 |  |  | UI设计师 [25%]; 测试员1 [35%]; 测试员2 [40%] | 8h | 380 | ¥38.00 | ¥76.00 |
| 82 | 1.3.5.3 | 沟通 | manual | 1d | 2020-12-02 | 2020-12-02 | 43 |  |  | UI设计师 [50%]; 测试员1 [25%]; 测试员2 [25%] | 8h | 440 | ¥44.00 | ¥88.00 |
| 83 | 1.3.6 | 采购 | manual | 1d | 2020-12-03 | 2020-12-04 | 43 |  |  | 程 | 8h | 280 | ¥28.00 | ¥56.00 |
| 84 | 1.3.7 | 项目验收 |  | 1.33d | 2020-12-22 | 2020-12-23 | 44 | 0d |  | UI设计师 [80%]; 测试员1 [90%]; 测试员2 [90%]; 设计专家 [75%] | 32h | 1,584 | ¥1,58.40 | ¥316.80 |
| 85 | 1.4 | **收尾** |  | 7.5d | 2020-12-23 | 2021-01-01 |  | 0d |  | 储备资金 [0.1%]; 间接成本 [0.1%] | 264h | 17,201.6 |  |  |
| 86 | 1.4.1 | 项目终验 |  | 2.86d | 2020-12-23 | 2020-12-28 | 84 | 4.64d |  | UI设计师 [85%]; 测试员1 [70%]; 测试员2 [90%]; 设计专家 [70%] | 64h | 3,168 | ¥316.80 | ¥633.60 |
| 87 | 1.4.2 | 结束采购 |  | 1d | 2020-12-23 | 2020-12-24 | 84 | 6.5d |  | 程 | 8h | 280 | ¥28.00 | ¥56.00 |
| 88 | 1.4.3 | 项目内部收尾 |  | 7.5d | 2020-12-23 | 2021-01-01 | 84 | 0d |  | UI设计师 [80%]; 测试员1 [90%]; 测试员2; 设计专家 | 192h | 6,304 | ¥630.40 | ¥1,260.80 |
