# 宋畅_ml

Schedule from MS Project, 2020-11-02 to 2021-02-05, costs in ¥.
Microsoft

## Calendars

- 标准: Mon-Fri 08:00-12:00, 13:00-17:00; Sat-Sun off.

## Resources

| Resource | Rate |
| --- | --- |
| 项目经理 | 35 |
| 产品经理 | 43 |
| 技术专家 | 30 |
| UI设计师 | 35 |
| 测试专家 | 45 |
| 需求专家 | 20 |
| 设计专家 | 25 |
| 程序员1 | 20 |
| 程序员2 | 20 |
| 程序员3 | 25 |
| 测试员1 | 20 |
| 测试员2 | 20 |
| 团队建设费 |  |

## Schedule

| ID | WBS | Task | Type | Duration | Start | Finish | Predecessors | Resources | Work | Cost | 间接成本 | 储备资金 |
| --- | --- | --- | --- | --- | --- | --- | --- | --- | --- | --- | --- | --- |
| 1 | 1 | **启动** |  | 3d | 2020-11-02 | 2020-11-04 |  |  | 112h | 4,008 | ¥400.80 | ¥4,008.00 |
| 2 | 1.1 | 组建核心团队 | manual | 1d | 2020-11-02 | 2020-11-02 |  | 项目经理; 产品经理; 技术专家; UI设计师; 测试专家 | 40h | 1,504 | ¥150.40 | ¥1,504.00 |
| 3 | 1.2 | 干系人分析 | manual | 1d | 2020-11-02 | 2020-11-02 |  | 项目经理 | 8h | 280 | ¥28.00 | ¥280.00 |
| 4 | 1.3 | 里程碑计划 | manual | 1d | 2020-11-02 | 2020-11-02 |  | 项目经理 | 8h | 280 | ¥28.00 | ¥280.00 |
| 5 | 1.4 | 制定项目章程 | manual | 1d | 2020-11-03 | 2020-11-03 | 2, 3, 4 | 项目经理 | 8h | 280 | ¥28.00 | ¥280.00 |
| 6 | 1.5 | 项目启动大会 | manual | 1d | 2020-11-04 | 2020-11-04 | 5 | UI设计师; 测试专家; 产品经理; 技术专家; 项目经理; 需求专家 | 48h | 1,664 | ¥166.40 | ¥1,664.00 |
| 7 | 2 | **规划** |  | 14d | 2020-11-05 | 2020-11-24 |  |  | 208h | 7,320 | ¥732.00 | ¥7,320.00 |
| 8 | 2.1 | **规划范围** |  | 4d | 2020-11-05 | 2020-11-10 |  |  | 56h | 1,840 | ¥184.00 | ¥1,840.00 |
| 9 | 2.1.1 | 制定需求说明书 | manual | 1d | 2020-11-05 | 2020-11-05 | 6 | 需求专家 | 8h | 160 | ¥16.00 | ¥160.00 |
| 10 | 2.1.2 | 界面设计 | manual | 1d | 2020-11-06 | 2020-11-06 | 9 | UI设计师 | 8h | 280 | ¥28.00 | ¥280.00 |
| 11 | 2.1.3 | 详细设计说明书 | manual | 1d | 2020-11-06 | 2020-11-06 | 9 | UI设计师 | 8h | 280 | ¥28.00 | ¥280.00 |
| 12 | 2.1.4 | 项目范围说明书 | manual | 1d | 2020-11-06 | 2020-11-06 | 9 | 项目经理 | 8h | 280 | ¥28.00 | ¥280.00 |
| 13 | 2.1.5 | 创建WBS | manual | 1d | 2020-11-09 | 2020-11-09 | 10, 11, 12 | 项目经理; UI设计师 | 16h | 560 | ¥56.00 | ¥560.00 |
| 14 | 2.1.6 | 形成范围基准 | manual | 1d | 2020-11-10 | 2020-11-10 | 13 | 项目经理 | 8h | 280 | ¥28.00 | ¥280.00 |
| 15 | 2.2 | **规划时间** |  | 8d | 2020-11-11 | 2020-11-20 |  |  | 40h | 1,400 | ¥140.00 | ¥1,400.00 |
| 16 | 2.2.1 | 排列工作包顺序 | manual | 1d | 2020-11-11 | 2020-11-11 | 14 | 项目经理 | 8h | 280 | ¥28.00 | ¥280.00 |
| 17 | 2.2.2 | 估算资源 | manual | 1d | 2020-11-12 | 2020-11-12 | 16 | 项目经理 | 8h | 280 | ¥28.00 | ¥280.00 |
| 18 | 2.2.3 | 估算持续时间 | manual | 1d | 2020-11-13 | 2020-11-13 | 17 | 项目经理 | 8h | 280 | ¥28.00 | ¥280.00 |
| 19 | 2.2.4 | 制定进度计划 | manual | 1d | 2020-11-16 | 2020-11-16 | 18 | 项目经理 | 8h | 280 | ¥28.00 | ¥280.00 |
| 20 | 2.2.5 | 形成进度基准 | manual | 1d | 2020-11-17 | 2020-11-17 | 19 | 项目经理 | 8h | 280 | ¥28.00 | ¥280.00 |
| 21 | 2.3 | **规划成本** |  | 3d | 2020-11-18 | 2020-11-20 |  |  | 24h | 840 | ¥84.00 | ¥840.00 |
| 22 | 2.3.1 | 项目成本估算 | manual | 1d | 2020-11-18 | 2020-11-18 | 20 | 项目经理 | 8h | 280 | ¥28.00 | ¥280.00 |
| 23 | 2.3.2 | 项目预算 | manual | 1d | 2020-11-19 | 2020-11-19 | 22 | 项目经理 | 8h | 280 | ¥28.00 | ¥280.00 |
| 24 | 2.3.3 | 形成范围基准 | manual | 1d | 2020-11-20 | 2020-11-20 | 23 | 项目经理 | 8h | 280 | ¥28.00 | ¥280.00 |

| ID | WBS | Task | Type | Duration | Start | Finish | Predecessors | Constraint | Resources | Work | Cost | 间接成本 | 储备资金 |
| --- | --- | --- | --- | --- | --- | --- | --- | --- | --- | --- | --- | --- | --- |
| 25 | 2.4 | **规划质量** |  | 2d | 2020-11-11 | 2020-11-12 |  |  |  | 16h | 720 | ¥72.00 | ¥720.00 |
| 26 | 2.4.1 | 制定测试计划 | manual | 1d | 2020-11-11 | 2020-11-11 | 14 |  | 测试专家 | 8h | 360 | ¥36.00 | ¥360.00 |
| 27 | 2.4.2 | 制定测试用例 | manual | 1d | 2020-11-12 | 2020-11-12 | 26 |  | 测试专家 | 8h | 360 | ¥36.00 | ¥360.00 |
| 28 | 2.5 | **规划人力资源** |  | 2d | 2020-11-13 | 2020-11-16 |  |  |  | 16h | 560 | ¥56.00 | ¥560.00 |
| 29 | 2.5.1 | 制定人力资源计划 | manual | 1d | 2020-11-13 | 2020-11-13 | 17 |  | 项目经理 | 8h | 280 | ¥28.00 | ¥280.00 |
| 30 | 2.5.2 | 制定人员配备管理计划 | manual | 1d | 2020-11-16 | 2020-11-16 | 29 |  | 项目经理 | 8h | 280 | ¥28.00 | ¥280.00 |
| 31 | 2.6 | **规划沟通** |  | 1d | 2020-11-17 | 2020-11-17 |  |  |  | 8h | 280 | ¥28.00 | ¥280.00 |
| 32 | 2.6.1 | 制定沟通管理计划 | manual | 1d | 2020-11-17 | 2020-11-17 | 30 |  | 项目经理 | 8h | 280 | ¥28.00 | ¥280.00 |
| 33 | 2.7 | **规划采购** |  | 2d | 2020-11-13 | 2020-11-16 |  |  |  | 16h | 560 | ¥56.00 | ¥560.00 |
| 34 | 2.7.1 | 自制外购分析 | manual | 1d | 2020-11-13 | 2020-11-13 | 17 |  | 项目经理 | 8h | 280 | ¥28.00 | ¥280.00 |
| 35 | 2.7.2 | 制定采购文件 | manual | 1d | 2020-11-16 | 2020-11-16 | 34 |  | 项目经理 | 8h | 280 | ¥28.00 | ¥280.00 |
| 36 | 2.8 | **规划风险** |  | 3d | 2020-11-21 | 2020-11-24 |  |  |  | 32h | 1,120 | ¥112.00 | ¥1,120.00 |
| 37 | 2.8.1 | 识别风险 | manual | 1d | 2020-11-21 | 2020-11-21 | 15, 21, 25, 28 | start no earlier than 2020-11-21 | 项目经理 | 8h | 280 | ¥28.00 | ¥280.00 |
| 38 | 2.8.2 | 风险分析 | manual | 1d | 2020-11-22 | 2020-11-22 | 37 | start no earlier than 2020-11-22 | 项目经理 | 8h | 280 | ¥28.00 | ¥280.00 |
| 39 | 2.8.3 | 制定风险登记册 | manual | 1d | 2020-11-23 | 2020-11-23 | 38 | start no earlier than 2020-11-23 | 项目经理 | 8h | 280 | ¥28.00 | ¥280.00 |
| 40 | 2.8.4 | 规划整合 | manual | 1d | 2020-11-24 | 2020-11-24 | 39 | start no earlier than 2020-11-24 | 项目经理 | 8h | 280 | ¥28.00 | ¥280.00 |
| 41 | 3 | **执行与监控** |  | 52d | 2020-11-25 | 2021-02-05 |  |  |  | 653.6h | 18,464 | ¥1,846.40 | ¥18,464.00 |
| 42 | 3.1 | 组建项目团队 | manual | 1d | 2020-11-25 | 2020-11-25 | 7 | start no earlier than 2020-11-25 | 项目经理; UI设计师; 测试员1; 测试员2; 测试专家; 产品经理; 程序员1; 程序员2; 程序员3; 技术专家; 设计专家 | 88h | 2,544 | ¥254.40 | ¥2,544.00 |
| 43 | 3.2 | **项目执行** |  | 19d | 2020-11-25 | 2020-12-22 |  |  |  | 328h | 7,160 | ¥716.00 | ¥7,160.00 |
| 44 | 3.2.1 | **主页** |  | 6d | 2020-11-25 | 2020-12-03 |  |  | 程序员1 [50%]; 程序员2; 程序员3 [50%] | 144h | 3,080 | ¥308.00 | ¥3,080.00 |
| 45 | 3.2.1.1 | **舆情分析监控系统** |  | 6d | 2020-11-25 | 2020-12-03 |  |  |  | 48h | 1,040 | ¥104.00 | ¥1,040.00 |
| 46 | 3.2.1.1.1 | **数据概览** |  | 1d | 2020-11-26 | 2020-11-27 |  |  |  | 8h | 160 | ¥16.00 | ¥160.00 |
| 47 | 3.2.1.1.1.1 | 平台数据概览 | manual | 1d | 2020-11-26 | 2020-11-27 | 42 |  | 程序员1 | 8h | 160 | ¥16.00 | ¥160.00 |
| 48 | 3.2.1.1.2 | **数据监控** |  | 2.12d | 2020-11-27 | 2020-11-28 |  |  |  | 8h | 160 | ¥16.00 | ¥160.00 |
| 49 | 3.2.1.1.2.1 | 实时监控 | manual | 1d | 2020-11-27 | 2020-11-27 | 46 |  | 程序员1 | 8h | 160 | ¥16.00 | ¥160.00 |

| ID | WBS | Task | Type | Duration | Start | Finish | Predecessors | Total slack | Constraint | Resources | Work | Cost | 间接成本 | 储备资金 |
| --- | --- | --- | --- | --- | --- | --- | --- | --- | --- | --- | --- | --- | --- | --- |
| 50 | 3.2.1.1.3 | **报警管理** |  | 2d | 2020-11-30 | 2020-12-01 |  | 0d |  |  | 16h | 320 | ¥32.00 | ¥320.00 |
| 51 | 3.2.1.1.3.1 | 报警通知 | manual | 1d | 2020-11-30 | 2020-11-30 | 48 |  |  | 程序员2 | 8h | 160 | ¥16.00 | ¥160.00 |
| 52 | 3.2.1.1.3.2 | 智能预警配置 | manual | 1d | 2020-12-01 | 2020-12-01 | 51 |  |  | 程序员2 | 8h | 160 | ¥16.00 | ¥160.00 |
| 53 | 3.2.1.1.4 | **系统管理** |  | 2d | 2020-12-02 | 2020-12-03 |  | 0d |  |  | 16h | 400 | ¥40.00 | ¥400.00 |
| 54 | 3.2.1.1.4.1 | 用户管理 | manual | 1d | 2020-12-02 | 2020-12-02 | 52 |  |  | 程序员3 | 8h | 200 | ¥20.00 | ¥200.00 |
| 55 | 3.2.1.1.4.2 | 权限管理 | manual | 1d | 2020-12-03 | 2020-12-03 | 54 |  |  | 程序员3 | 8h | 200 | ¥20.00 | ¥200.00 |
| 56 | 3.2.2 | **后台** |  | 10d | 2020-11-28 | 2020-12-11 |  |  |  |  | 184h | 4,080 | ¥408.00 | ¥4,080.00 |
| 57 | 3.2.2.1 | **爬虫模块** |  | 6d | 2020-11-28 | 2020-12-07 |  |  |  |  | 56h | 1,120 | ¥112.00 | ¥1,120.00 |
| 58 | 3.2.2.1.1 | 对网站进行爬取 | manual | 2d | 2020-11-26 | 2020-11-27 | 42 |  |  | 程序员1 | 16h | 320 | ¥32.00 | ¥320.00 |
| 59 | 3.2.2.1.2 | 对数据进行抓取和处理 | manual | 4d | 2020-11-30 | 2020-12-03 | 58 |  |  | 程序员1 | 32h | 640 | ¥64.00 | ¥640.00 |
| 60 | 3.2.2.1.3 | 数据存储 | manual | 1d | 2020-12-04 | 2020-12-04 | 59 |  |  | 程序员1 | 8h | 160 | ¥16.00 | ¥160.00 |
| 61 | 3.2.2.2 | **情感分析模块** |  | 7d | 2020-11-28 | 2020-12-08 |  |  |  |  | 48h | 960 | ¥96.00 | ¥960.00 |
| 62 | 3.2.2.2.1 | 对数据进行预处理 | manual | 2d | 2020-11-26 | 2020-11-27 | 42 |  |  | 程序员2 | 16h | 320 | ¥32.00 | ¥320.00 |
| 63 | 3.2.2.2.2 | 计算词向量 | manual | 1d | 2020-11-27 | 2020-11-27 | 62 |  |  | 程序员2 | 8h | 160 | ¥16.00 | ¥160.00 |
| 64 | 3.2.2.2.3 | 训练模型 | manual | 3d | 2020-11-30 | 2020-12-02 | 63 |  |  | 程序员2 | 24h | 480 | ¥48.00 | ¥480.00 |
| 65 | 3.2.2.3 | **热词变化词频模块** |  | 10d | 2020-11-28 | 2020-12-11 |  |  |  |  | 80h | 2,000 | ¥200.00 | ¥2,000.00 |
| 66 | 3.2.2.3.1 | 连接ES | manual | 2d | 2020-11-26 | 2020-11-27 | 42 |  |  | 程序员3 | 16h | 400 | ¥40.00 | ¥400.00 |
| 67 | 3.2.2.3.2 | 将数据存储进ES | manual | 1d | 2020-11-27 | 2020-11-27 | 66 |  |  | 程序员3 | 8h | 200 | ¥20.00 | ¥200.00 |
| 68 | 3.2.2.3.3 | 指定时间段热点追踪 | manual | 2d | 2020-11-30 | 2020-12-01 | 67 |  |  | 程序员3 | 16h | 400 | ¥40.00 | ¥400.00 |
| 69 | 3.2.2.3.4 | 指定时间段情感预警 | manual | 5d | 2020-12-02 | 2020-12-08 | 68 |  |  | 程序员3 | 40h | 1,000 | ¥100.00 | ¥1,000.00 |
| 70 | 3.3 | **项目监控** |  | 3d | 2020-11-26 | 2020-11-28 |  |  |  |  | 96.8h | 4,992 | ¥499.20 | ¥4,992.00 |
| 71 | 3.3.1 | 各项指标监控 | manual | 1d | 2020-11-26 | 2020-11-26 | 42 |  | start no earlier than 2020-11-26 | 测试员1 [50%]; 项目经理 [50%] | 8h | 220 | ¥22.00 | ¥220.00 |
| 72 | 3.3.2 | 监控评审 | manual | 1d | 2020-11-27 | 2020-11-27 | 71 |  | start no earlier than 2020-11-27 | UI设计师; 项目经理 | 16h | 560 | ¥56.00 | ¥560.00 |
| 73 | 3.3.3 | 变更评审 | manual | 1d | 2020-11-28 | 2020-11-28 | 72 |  | start no earlier than 2020-11-28 | UI设计师 [50%]; 项目经理 [50%] | 8h | 280 | ¥28.00 | ¥280.00 |
| 74 | 3.3.4 | 例会 | manual | 1d | 2020-11-26 | 2020-11-26 | 42 |  | start no earlier than 2020-11-26 | UI设计师; 项目经理 [10%]; 测试员1; 测试专家; 产品经理; 程序员1; 程序员2; 程序员3; 技术专家; 团队建设费 [0.1%] | 64.8h | 3,932 | ¥393.20 | ¥3,932.00 |

| ID | WBS | Task | Type | Duration | Start | Finish | Predecessors | Total slack | Free slack | Constraint | Resources | Work | Cost | 间接成本 | 储备资金 |
| --- | --- | --- | --- | --- | --- | --- | --- | --- | --- | --- | --- | --- | --- | --- | --- |
| 75 | 3.4 | **管理干系人** |  | 3d | 2020-11-26 | 2020-11-30 |  |  |  |  |  | 12.8h | 448 | ¥44.80 | ¥448.00 |
| 76 | 3.4.1 | 发布项目信息 | manual | 1d | 2020-11-26 | 2020-11-26 | 42 |  |  | start no earlier than 2020-11-26 | 项目经理 [10%] | 0.8h | 28 | ¥2.80 | ¥28.00 |
| 77 | 3.4.2 | 报告监控指标 | manual | 1d | 2020-11-27 | 2020-11-27 | 42 |  |  |  | 项目经理 | 8h | 280 | ¥28.00 | ¥280.00 |
| 78 | 3.4.3 | 干系人沟通 | manual | 1d | 2020-11-30 | 2020-11-30 | 42 |  |  |  | 项目经理 [50%] | 4h | 140 | ¥14.00 | ¥140.00 |
| 79 | 3.5 | **团队建设** |  | 3d | 2020-11-30 | 2020-12-02 |  |  |  |  |  | 88h | 2,240 | ¥224.00 | ¥2,240.00 |
| 80 | 3.5.1 | 培训 | manual | 2d | 2020-11-30 | 2020-12-01 | 42 |  |  |  | UI设计师; 测试员1; 测试员2 | 48h | 1,200 | ¥120.00 | ¥1,200.00 |
| 81 | 3.5.2 | 娱乐活动 | manual | 1d | 2020-12-02 | 2020-12-02 | 42 |  |  |  | UI设计师; 测试员1 [50%]; 测试员2 [50%] | 16h | 440 | ¥44.00 | ¥440.00 |
| 82 | 3.5.3 | 沟通 | manual | 1d | 2020-12-02 | 2020-12-02 | 42 |  |  |  | UI设计师; 测试员1; 测试员2 | 24h | 600 | ¥60.00 | ¥600.00 |
| 83 | 3.6 | 采购 | manual | 1d | 2020-12-03 | 2020-12-04 | 42 |  |  |  | 项目经理 | 8h | 280 | ¥28.00 | ¥280.00 |
| 84 | 3.7 | 项目验收 |  | 1d | 2020-12-22 | 2020-12-23 | 43 | 2.88d | 0d |  | UI设计师; 测试员1; 测试员2; 设计专家 | 32h | 800 | ¥80.00 | ¥800.00 |
| 85 | 4 | **收尾** |  | 5d | 2020-12-23 | 2020-12-29 |  |  |  |  |  | 136h | 3,480 | ¥348.00 | ¥3,480.00 |
| 86 | 4.1 | 项目终验 |  | 2d | 2020-12-23 | 2020-12-25 | 84 | 2.88d |  |  | UI设计师; 测试员1; 测试员2; 设计专家 | 64h | 1,600 | ¥160.00 | ¥1,600.00 |
| 87 | 4.2 | 结束采购 |  | 1d | 2020-12-23 | 2020-12-24 | 84 | 3.88d |  |  | 项目经理 | 8h | 280 | ¥28.00 | ¥280.00 |
| 88 | 4.3 | 项目内部收尾 |  | 2d | 2020-12-23 | 2020-12-25 | 84 | 2.88d |  |  | UI设计师; 测试员1; 测试员2; 设计专家 | 64h | 1,600 | ¥160.00 | ¥1,600.00 |
